Schedule from MS Project, 2023-09-14 to 2023-12-07.

## Calendars

- Estándar: Mon-Fri 09:00-13:00, 15:00-19:00; Sat-Sun off.

## Resources

| Resource |
| --- |
| <Recurso nuevo> |

## Schedule

| ID | WBS | Task | Type | Duration | Start | Finish | Predecessors | Total slack | Free slack |
| --- | --- | --- | --- | --- | --- | --- | --- | --- | --- |
| 1 | 1 | **Sistema de gestion de turnos y pacientes para la SAP** |  | 61d | 2023-09-14 | 2023-12-07 |  | 0d |  |
| 2 | 1.1 | **Investigación preliminar** |  | 21d | 2023-09-14 | 2023-10-12 |  | 0d |  |
| 3 | 1.1.1 | Verificar el estado de las instalaciones electricas. |  | 2d | 2023-09-14 | 2023-09-15 |  | 42d | 0d |
| 4 | 1.1.2 | Investigar recursos para el reacondicionamiento electrico del sitio. |  | 3d | 2023-09-18 | 2023-09-20 | 3 | 42d | 0d |
| 5 | 1.1.3 | Realizar presupuesto de recursos para el reacondicionamiento eléctrico del sitio (cableado y limpieza). |  | 4d | 2023-09-21 | 2023-09-26 | 4 | 42d | 0d |
| 6 | 1.1.4 | Reacondicionar el lugar. |  | 10d | 2023-09-27 | 2023-10-10 | 5 | 42d |  |
| 7 | 1.1.5 | Realizar entrevista al jefe |  | 1d | 2023-09-14 | 2023-09-14 |  | 0d |  |
| 8 | 1.1.6 | Elaborar Especificación de Requisitos de Usuario (ERS) |  | 3d | 2023-09-15 | 2023-09-19 | 7 | 0d |  |
| 9 | 1.1.7 | Verificar el estado de los equipos actuales (computadoras). |  | 2d | 2023-09-20 | 2023-09-21 | 8 | 35d | 0d |
| 10 | 1.1.8 | Realizar pedido de computadoras nuevas a la Subsecretaría de Salud. |  | 14d | 2023-09-22 | 2023-10-11 | 9 | 35d | 0d |
| 11 | 1.1.9 | Recibir pedido de computadoras. |  | 1d | 2023-10-12 | 2023-10-12 | 10 | 35d | 0d |
| 12 | 1.1.10 | Investigación preliminar realizada. | milestone | 0d | 2023-10-12 | 2023-10-12 | 11 | 35d |  |
| 13 | 1.2 | **Desarrollo** |  | 57d | 2023-09-20 | 2023-12-07 |  | 0d |  |
| 14 | 1.2.1 | **Base de datos** |  | 24d | 2023-09-20 | 2023-10-23 |  | 0d |  |
| 15 | 1.2.1.1 | Realizar el modelo entidad relación de la base de datos para turnos y pacientes. |  | 5d | 2023-09-20 | 2023-09-26 | 8 | 0d |  |
| 16 | 1.2.1.2 | Realizar modelo relacional de la BD. |  | 3d | 2023-09-27 | 2023-09-29 | 15 | 0d |  |
| 17 | 1.2.1.3 | Desarrollar la base de datos. |  | 14d | 2023-10-02 | 2023-10-19 | 16 | 0d |  |
| 18 | 1.2.1.4 | Desplegar la base de datos. |  | 2d | 2023-10-20 | 2023-10-23 | 17 | 0d |  |
| 19 | 1.2.1.5 | Base de datos desplegada. | milestone | 0d | 2023-10-23 | 2023-10-23 | 18 | 33d |  |
| 20 | 1.2.2 | **Interfaz de usuario** |  | 13d | 2023-09-20 | 2023-10-06 |  | 11d |  |
| 21 | 1.2.2.1 | Diseñar boceto de interfaz del programa que será usado por el personal de recepción. |  | 4d | 2023-09-20 | 2023-09-25 | 8 | 11d | 0d |
| 22 | 1.2.2.2 | Presentar boceto al personal de recepción. |  | 1d | 2023-09-26 | 2023-09-26 | 21 | 11d | 0d |
| 23 | 1.2.2.3 | Desarrollar interfaz. |  | 8d | 2023-09-27 | 2023-10-06 | 22 | 11d | 0d |
| 24 | 1.2.2.4 | Interfaz de usuario realizada. | milestone | 0d | 2023-10-06 | 2023-10-06 | 23 | 11d |  |

| ID | WBS | Task | Type | Duration | Start | Finish | Predecessors | Total slack |
| --- | --- | --- | --- | --- | --- | --- | --- | --- |
| 25 | 1.2.3 | **Aplicación** |  | 16d | 2023-10-24 | 2023-11-14 |  | 0d |
| 26 | 1.2.3.1 | Realizar diagrama de clases. |  | 2d | 2023-10-24 | 2023-10-25 | 18, 24 | 0d |
| 27 | 1.2.3.2 | Desarrollar el módulo de turnos de la aplicación. |  | 14d | 2023-10-26 | 2023-11-14 | 26 | 0d |
| 28 | 1.2.3.3 | Desarrollar el módulo de pacientes de la aplicación. |  | 14d | 2023-10-26 | 2023-11-14 | 26 | 0d |
| 29 | 1.2.3.4 | Aplicación desarrollada. | milestone | 0d | 2023-11-14 | 2023-11-14 | 28, 27 | 0d |
| 30 | 1.2.4 | **Integración** |  | 12d | 2023-11-15 | 2023-11-30 |  | 0d |
| 31 | 1.2.4.1 | Integrar capas del sistema. |  | 5d | 2023-11-15 | 2023-11-21 | 29 | 0d |
| 32 | 1.2.4.2 | Realizar pruebas al sistema. |  | 7d | 2023-11-22 | 2023-11-30 | 31 | 0d |
| 33 | 1.2.4.3 | Realizar manual de usuario de la aplicación. |  | 5d | 2023-11-22 | 2023-11-28 | 31 | 2d |
| 34 | 1.2.4.4 | Integración finalizada. | milestone | 0d | 2023-11-30 | 2023-11-30 | 33, 32 | 0d |
| 35 | 1.2.5 | **Despliegue** |  | 5d | 2023-12-01 | 2023-12-07 |  | 0d |
| 36 | 1.2.5.1 | Instalar las nuevas computadoras en el área de recepción. |  | 1d | 2023-12-01 | 2023-12-01 | 12, 34 | 0d |
| 37 | 1.2.5.2 | Instalar el sistema en las computadoras nuevas. |  | 1d | 2023-12-04 | 2023-12-04 | 36 | 0d |
| 38 | 1.2.5.3 | Capacitar al personal de recepción. |  | 3d | 2023-12-05 | 2023-12-07 | 37 | 0d |
| 39 | 1.2.5.4 | Sistema desplegado. | milestone | 0d | 2023-12-07 | 2023-12-07 | 38 | 0d |
| 40 | 1.2.6 | Desarrollo finalizado. | milestone | 0d | 2023-12-07 | 2023-12-07 | 39 | 0d |
| 41 | 2 | Sistema de gestión implementado. | milestone | 0d | 2023-12-07 | 2023-12-07 | 40 | 0d |
